# SitioWeb-VinosLicoresGus

How a schedule from MS Project changed from version to version. A marks actual dates.

## Version 1 (saved 2017-07-01)

| ID | WBS | Task | Duration | Start | Finish | Predecessors | Complete | Total float | Constraint |
| --- | --- | --- | --- | --- | --- | --- | --- | --- | --- |
| 1 | 1 | **Plan preliminar** | 2.62d | 2017-05-08 16:30 A | 2017-05-11 11:30 A |  | 100% |  |  |
| 2 |  | Generar el WBS del producto inicial | 1h | 2017-05-08 16:30 A | 2017-05-08 17:30 A |  | 100% |  |  |
| 3 |  | Generar project charter | 1h | 2017-05-09 16:30 A | 2017-05-09 17:30 A | 2 | 100% |  |  |
| 4 |  | Plan de proyecto preliminar | 2h | 2017-05-10 10:30 A | 2017-05-10 12:30 A | 3 | 100% |  |  |
| 5 |  | Generar matriz de responsabilidades | 1h | 2017-05-11 10:30 A | 2017-05-11 11:30 A | 4 | 100% |  |  |
| 6 | 2 | **Sitio Web Vinos y Licores Gus** | 83.75d | 2017-05-12 08:00 | 2017-08-19 16:00 |  | 4% |  |  |
| 7 |  | Formación del equipo de desarrollo | 8h | 2017-05-12 16:30 A | 2017-05-15 16:30 |  | 25% | 73.05d | finish no earlier than 2017-05-12 20:30 |
| 8 | 2.2 | **Especificación de requerimientos** | 11.31d | 2017-05-17 16:30 A | 2017-05-30 20:30 | 7 | 36% | 68d |  |
| 9 | 2.2.1 | **Elicitación de requerimientos** | 7.31d | 2017-05-17 16:30 A | 2017-05-25 19:00 |  | 57% | 72d |  |
| 10 |  | Generar lista de proveedores | 1h | 2017-05-17 16:30 A | 2017-05-17 17:30 A |  | 100% |  | start no earlier than 2017-05-17 16:30 |
| 11 |  | Evaluar los proveedores de requerimientos a entrevistar | 4h | 2017-05-17 17:30 A | 2017-05-18 11:30 A | 10 | 100% |  |  |
| 12 |  | Definir la estrategia de recolección de requerimientos | 1h | 2017-05-19 16:30 | 2017-05-19 17:30 |  |  | 77.19d | start no earlier than 2017-05-19 16:30 |
| 13 |  | Planificar reuniones de elicitación de requerimientos | 4h | 2017-05-20 15:00 | 2017-05-20 20:30 |  |  | 76d | finish no earlier than 2017-05-20 20:30 |
| 14 |  | Identificar los procesos del sistema | 1d | 2017-05-20 16:30 | 2017-05-22 16:30 |  |  | 75.31d | start no earlier than 2017-05-20 16:30 |
| 15 |  | Identificar los requerimientos funcionales | 1d | 2017-05-23 16:30 A | 2017-05-24 16:30 A | 14 | 100% |  |  |
| 16 |  | Identificar los requerimientos no funcionales | 4h | 2017-05-25 15:00 A | 2017-05-25 19:00 A | 15 | 100% |  | finish no earlier than 2017-05-25 20:30 |
| 17 | 2.2.2 | **Especificación de requerimientos** | 2.62d | 2017-05-25 09:00 | 2017-05-27 16:00 |  |  | 70.38d |  |
| 18 |  | Describrir los requerimientos | 2h | 2017-05-25 09:00 | 2017-05-25 11:00 |  |  | 72.75d | start no earlier than 2017-05-25 08:00 |
| 19 |  | Evaluar los requerimientos | 2h | 2017-05-25 09:00 | 2017-05-27 16:00 |  |  | 70.38d | finish no earlier than 2017-05-27 16:00 |
| 20 | 2.2.3 | **Gestión de requerimientos** | 4d | 2017-05-26 09:00 | 2017-05-30 20:30 |  |  | 68d |  |
| 21 |  | Priorizar los requerimientos | 1h | 2017-05-29 16:30 | 2017-05-29 17:30 |  |  | 69.19d | start no earlier than 2017-05-29 16:30 |
| 22 |  | Almacenar los requerimientos en un repositorio central | 5h | 2017-05-26 09:00 | 2017-05-26 16:00 |  |  | 71.38d | finish no earlier than 2017-05-26 16:00 |
| 23 |  | Asignar al grupo de desarrollo los requerimientos del software | 1h | 2017-05-30 18:00 | 2017-05-30 20:30 |  |  | 68d | finish no earlier than 2017-05-30 20:30 |
| 24 |  | Administrar los cambios en los requerimientos | 2h | 2017-05-30 17:00 | 2017-05-30 20:30 |  |  | 68d | finish no earlier than 2017-05-30 20:30 |
| 25 |  | Administrar la trazabilidad de los requerimientos | 2h | 2017-05-30 17:00 | 2017-05-30 20:30 |  |  | 68d | finish no earlier than 2017-05-30 20:30 |
| 26 |  | Calificación V & V de requerimientos | 2h | 2017-05-30 16:30 | 2017-05-30 18:30 |  |  | 68.06d | start no earlier than 2017-05-30 16:30 |
| 27 |  | Hito de especificación de requerimientos | 0d | 2017-05-30 18:30 | 2017-05-30 18:30 | 26 |  | 68.06d | start no earlier than 2017-05-30 16:30 |
| 28 | 2.3 | **Planificación** | 11.12d | 2017-05-31 15:00 A | 2017-06-14 16:00 |  | 13% | 56.38d |  |
| 29 |  | Definición de ciclo de vida | 1.12d | 2017-05-31 15:00 A | 2017-06-01 16:00 |  | 89% | 66.38d | finish no earlier than 2017-06-01 16:00 |
| 30 |  | Politicas del proyecto | 1h | 2017-06-01 18:00 | 2017-06-01 20:30 |  |  | 66d | finish no earlier than 2017-06-01 20:30 |
| 31 |  | Actualizar el plan de proyecto | 1h | 2017-06-01 09:00 | 2017-06-01 10:00 |  |  | 66.88d | start no earlier than 2017-06-01 08:00 |
| 32 | 2.3.4 | **Estimación** | 1.62d | 2017-06-01 08:00 A | 2017-06-02 16:00 |  | 26% | 65.38d |  |
| 33 |  | Actualizar WBS/calendario | 5h | 2017-06-01 08:00 A | 2017-06-01 16:00 A |  | 100% |  | finish no earlier than 2017-06-05 20:30 |
| 34 |  | Diccionario del WBS | 9h | 2017-06-01 09:00 | 2017-06-02 10:00 |  |  | 65.88d | start no earlier than 2017-06-01 08:00 |
| 35 |  | Costos | 5h | 2017-06-02 09:00 | 2017-06-02 16:00 |  |  | 65.38d | finish no earlier than 2017-06-02 16:00 |
| 36 | 2.3.5 | **Riesgos** | 7d | 2017-06-03 08:00 A | 2017-06-12 19:00 |  | 4% | 58d |  |
| 37 |  | Identificación de riesgos | 3h | 2017-06-03 08:00 A | 2017-06-03 12:00 A |  | 100% |  | start no earlier than 2017-06-13 16:30 |
| 38 |  | Base de datos de riesgos | 2.62d | 2017-06-03 08:00 A | 2017-06-06 16:00 |  |  | 60.38d | finish no earlier than 2017-06-06 16:00 |
| 39 |  | Análisis cuantitativo de riesgos del proyecto | 1d | 2017-06-06 16:00 | 2017-06-07 16:00 | 38 |  | 60.38d | finish no earlier than 2017-06-03 16:00 |
| 40 |  | Análisis cualitativo de riesgo del proyecto | 1d | 2017-06-07 16:00 | 2017-06-08 16:00 | 39 |  | 60.38d | finish no earlier than 2017-06-03 16:00 |
| 41 |  | Asignación de proridades | 13h | 2017-06-08 08:00 A | 2017-06-09 16:00 |  |  | 59.38d | finish no earlier than 2017-06-09 16:00 |
| 42 |  | Plan de mitigación y contingencia | 2d | 2017-06-09 08:00 A | 2017-06-12 19:00 |  |  | 58d | finish no earlier than 2017-06-12 16:00 |
| 43 | 2.3.6 | **2.3.6 Aseguramiento de la calidad** | 1.62d | 2017-06-13 08:00 A | 2017-06-14 16:00 |  |  | 56.38d |  |
| 44 |  | Plan de gestión de la configuración | 1.62d | 2017-06-13 08:00 A | 2017-06-14 16:00 |  |  | 56.38d | finish no earlier than 2017-06-14 16:00 |
| 45 |  | Junta de arranque de construcción | 5h | 2017-06-14 08:00 A | 2017-06-14 16:00 |  |  | 56.38d | finish no earlier than 2017-06-13 16:00 |
| 46 |  | Hito de planeación | 0.62d | 2017-06-14 09:00 | 2017-06-14 16:00 |  |  | 56.38d | start no earlier than 2017-06-14 08:00 |
| 47 | 2.4 | **Diseño preliminar** | 8d | 2017-06-14 09:00 | 2017-06-22 19:00 |  |  | 46d |  |
| 48 |  | Definión de arquitectura | 2h | 2017-06-14 09:00 | 2017-06-14 11:00 |  |  | 53.75d | start no earlier than 2017-06-14 08:00 |
| 49 | 2.4.2 | **Diagramas UML** | 3.88d | 2017-06-14 09:00 | 2017-06-17 18:00 |  |  | 50.12d |  |
| 50 |  | Diagramas de casos de uso | 1.62d | 2017-06-14 09:00 | 2017-06-15 16:00 |  |  | 50.12d | finish no earlier than 2017-06-15 16:00 |
| 51 |  | Diagramas de secuencia | 1d | 2017-06-15 16:00 | 2017-06-16 16:00 | 50 |  | 50.12d |  |
| 52 |  | Diagrama de clases | 6h | 2017-06-16 16:00 | 2017-06-17 12:00 | 51 |  | 50.12d | finish no earlier than 2017-06-16 16:00 |
| 53 |  | Diagrama de componentes | 2h | 2017-06-17 12:00 | 2017-06-17 16:00 | 52 |  | 50.12d |  |
| 54 |  | Diagrama de despliegue | 2h | 2017-06-17 16:00 | 2017-06-17 18:00 | 53 |  | 50.12d |  |
| 55 |  | Mapa de navegación | 2h | 2017-06-17 09:00 | 2017-06-17 11:00 |  |  | 50.12d | start no earlier than 2017-06-17 08:00 |
| 56 |  | Maquetación/ bocetos | 0.62d | 2017-06-19 09:00 | 2017-06-19 16:00 | 55 |  | 49.38d | finish no earlier than 2017-06-19 16:00 |
| 57 | 2.4.5 | **Base de datos** | 3d | 2017-06-20 09:00 | 2017-06-22 19:00 |  |  | 46d |  |
| 58 |  | Diagrama entidad- relación | 5h | 2017-06-20 09:00 | 2017-06-20 16:00 |  |  | 46.38d | finish no earlier than 2017-06-20 16:00 |
| 59 |  | Diagrama relacional | 1d | 2017-06-21 09:00 | 2017-06-21 19:00 | 58 |  | 46d | start no earlier than 2017-06-21 08:00 |
| 60 |  | Diccionario de datos | 1d | 2017-06-22 09:00 | 2017-06-22 19:00 | 59 |  | 46d |  |
| 61 |  | Integración V&V | 3h | 2017-06-22 09:00 | 2017-06-22 12:00 |  |  | 46.62d | start no earlier than 2017-06-22 08:00 |
| 62 |  | Hito de diseño preliminar | 0d | 2017-06-22 08:00 | 2017-06-22 08:00 |  |  | 47d | start no earlier than 2017-06-22 08:00 |
| 63 | 2.5 | **Diseño detallado** | 4.75d | 2017-06-23 08:00 | 2017-06-28 16:00 | 47, 62 |  |  |  |
| 64 |  | Refinamiento del diseño | 1.62d | 2017-06-23 09:00 | 2017-06-24 16:00 |  |  | 47.38d | finish no earlier than 2017-06-24 16:00 |
| 65 |  | Pruebas unitarias o unidad | 3d | 2017-06-26 09:00 | 2017-06-28 19:00 |  |  | 44d | start no earlier than 2017-06-26 08:00 |
| 66 |  | Hito de diseño detallado | 0.62d | 2017-06-28 09:00 | 2017-06-28 16:00 |  |  | 44.38d | finish no earlier than 2017-06-28 16:00 |
| 67 | 2.6 | **Codificación** | 24.62d | 2017-06-29 09:00 | 2017-07-27 16:00 | 63 |  | 1d |  |
| 68 |  | Codificación de la base de datos | 5h | 2017-06-29 09:00 | 2017-06-29 16:00 |  |  | 24.38d | start no earlier than 2017-06-29 08:00 |
| 69 |  | Index | 4h | 2017-06-30 09:00 | 2017-06-30 13:00 |  |  | 23.5d | start no earlier than 2017-06-30 08:00 |
| 70 | 2.6.3 | **Módulo de usuarios** | 3.75d | 2017-06-30 08:00 | 2017-07-04 16:00 |  |  |  |  |

| ID | WBS | Task | Duration | Start | Finish | Predecessors | Total float | Constraint |
| --- | --- | --- | --- | --- | --- | --- | --- | --- |
| 71 |  | Clase de usuarios | 2h | 2017-07-01 09:00 | 2017-07-01 11:00 |  | 22.75d |  |
| 72 | 2.6.3.2 | **Controlador** | 1.62d | 2017-07-03 09:00 | 2017-07-04 16:00 |  | 20.38d |  |
| 73 |  | Alta | 7h | 2017-07-03 09:00 | 2017-07-03 18:00 |  | 21.12d | start no earlier than 2017-07-03 08:00 |
| 74 |  | Consulta | 13h | 2017-07-03 09:00 | 2017-07-04 16:00 |  | 20.38d | finish no earlier than 2017-07-04 16:00 |
| 75 |  | Modificación | 13h | 2017-07-03 09:00 | 2017-07-04 16:00 |  | 20.38d | finish no earlier than 2017-07-04 16:00 |
| 76 |  | Baja | 5h | 2017-07-04 09:00 | 2017-07-04 16:00 |  | 20.38d | finish no earlier than 2017-07-04 16:00 |
| 77 |  | Vistas/interfaz | 5h | 2017-07-04 09:00 | 2017-07-04 16:00 |  | 39.38d | finish no earlier than 2017-07-04 16:00 |
| 78 |  | Reportes | 5h | 2017-07-04 09:00 | 2017-07-04 16:00 |  | 39.38d | finish no earlier than 2017-07-04 16:00 |
| 79 | 2.6.4 | **Módulo de categorías** | 2.75d | 2017-07-05 08:00 | 2017-07-07 16:00 |  |  |  |
| 80 |  | Clase de categorías | 13h | 2017-07-05 09:00 | 2017-07-06 16:00 |  | 37.38d | finish no earlier than 2017-07-06 16:00 |
| 81 | 2.6.4.2 | **Controlador** | 1.75d | 2017-07-05 08:00 | 2017-07-06 16:00 |  |  |  |
| 82 |  | Alta | 13h | 2017-07-05 09:00 | 2017-07-06 16:00 |  | 37.38d | finish no earlier than 2017-07-06 16:00 |
| 83 |  | Consulta | 13h | 2017-07-05 09:00 | 2017-07-06 16:00 |  | 37.38d | finish no earlier than 2017-07-06 16:00 |
| 84 |  | Modificación | 13h | 2017-07-06 09:00 | 2017-07-07 16:00 |  | 36.38d | finish no earlier than 2017-07-07 16:00 |
| 85 |  | Baja | 13h | 2017-07-06 09:00 | 2017-07-07 16:00 |  | 36.38d | finish no earlier than 2017-07-07 16:00 |
| 86 |  | Vistas/interfaz | 13h | 2017-07-06 09:00 | 2017-07-07 16:00 |  | 36.38d | finish no earlier than 2017-07-07 16:00 |
| 87 |  | Reportes | 13h | 2017-07-06 09:00 | 2017-07-07 16:00 |  | 36.38d | finish no earlier than 2017-07-07 16:00 |
| 88 | 2.6.5 | **Módulo de productos** | 6.62d | 2017-07-08 09:00 | 2017-07-15 16:00 |  | 10.38d |  |
| 89 |  | Clases de producto | 2h | 2017-07-08 09:00 | 2017-07-08 11:00 |  | 16.75d | start no earlier than 2017-07-08 08:00 |
| 90 | 2.6.5.2 | **Controlador** | 2.62d | 2017-07-08 09:00 | 2017-07-11 16:00 |  | 14.38d |  |
| 91 |  | Alta | 13h | 2017-07-08 09:00 | 2017-07-10 16:00 |  | 15.38d | finish no earlier than 2017-07-10 16:00 |
| 92 |  | Consulta | 13h | 2017-07-08 09:00 | 2017-07-10 16:00 |  | 15.38d | finish no earlier than 2017-07-10 16:00 |
| 93 |  | Modificación | 13h | 2017-07-10 09:00 | 2017-07-11 16:00 |  | 14.38d | finish no earlier than 2017-07-11 16:00 |
| 94 |  | Baja | 13h | 2017-07-10 09:00 | 2017-07-11 16:00 |  | 14.38d | finish no earlier than 2017-07-11 16:00 |
| 95 |  | Vistas/interfaz | 2.62d | 2017-07-12 09:00 | 2017-07-14 16:00 |  | 11.38d | finish no earlier than 2017-07-14 16:00 |
| 96 |  | Reportes | 5h | 2017-07-15 09:00 | 2017-07-15 16:00 |  | 10.38d | finish no earlier than 2017-07-15 16:00 |
| 97 | 2.6.6 | **Módulo de ventas** | 2d | 2017-07-17 08:00 | 2017-07-18 18:00 |  |  |  |
| 98 |  | Clases de ventas | 2h | 2017-07-17 09:00 | 2017-07-17 11:00 |  | 9.75d |  |
| 99 | 2.6.6.2 | **Controlador** | 1.62d | 2017-07-17 09:00 | 2017-07-18 16:00 |  | 8.38d |  |
| 100 |  | Alta | 7h | 2017-07-17 09:00 | 2017-07-17 18:00 |  | 9.12d |  |
| 101 |  | Consulta | 6h | 2017-07-17 09:00 | 2017-07-17 17:00 |  | 9.25d |  |
| 102 |  | Modificación | 7h | 2017-07-17 09:00 | 2017-07-17 18:00 |  | 9.12d |  |
| 103 |  | Baja | 5h | 2017-07-18 09:00 | 2017-07-18 16:00 |  | 8.38d | finish no earlier than 2017-07-18 16:00 |
| 104 |  | Vistas/interfaz | 5h | 2017-07-18 09:00 | 2017-07-18 16:00 |  | 27.38d | finish no earlier than 2017-07-18 16:00 |
| 105 |  | Reportes | 5h | 2017-07-18 09:00 | 2017-07-18 16:00 |  | 27.38d | finish no earlier than 2017-07-18 16:00 |
| 106 | 2.6.7 | **Módulo comentarios** | 1.25d | 2017-07-18 12:00 | 2017-07-19 16:00 |  | 7.38d |  |
| 107 |  | Clases de comentarios | 2h | 2017-07-18 12:00 | 2017-07-18 16:00 |  | 8.38d | finish no earlier than 2017-07-18 16:00 |
| 108 | 2.6.7.2 | **Controlador** | 0.62d | 2017-07-19 09:00 | 2017-07-19 16:00 |  | 7.38d |  |
| 109 |  | Alta | 5h | 2017-07-19 09:00 | 2017-07-19 16:00 |  | 7.38d | finish no earlier than 2017-07-19 16:00 |
| 110 |  | Consulta | 5h | 2017-07-19 09:00 | 2017-07-19 16:00 |  | 7.38d | finish no earlier than 2017-07-19 16:00 |
| 111 |  | Modificación | 5h | 2017-07-19 09:00 | 2017-07-19 16:00 |  | 7.38d | finish no earlier than 2017-07-19 16:00 |
| 112 |  | Baja | 5h | 2017-07-19 09:00 | 2017-07-19 16:00 |  | 7.38d | finish no earlier than 2017-07-19 16:00 |
| 113 |  | Vistas/interfaz | 5h | 2017-07-19 09:00 | 2017-07-19 16:00 |  | 7.38d | finish no earlier than 2017-07-19 16:00 |
| 114 |  | Reportes | 5h | 2017-07-19 09:00 | 2017-07-19 16:00 |  | 7.38d | finish no earlier than 2017-07-19 16:00 |
| 115 | 2.6.8 | **Módulo promociones** | 2.62d | 2017-07-19 09:00 | 2017-07-21 16:00 |  | 5.38d |  |
| 116 |  | Clases de promociones | 2h | 2017-07-19 09:00 | 2017-07-19 11:00 |  | 7.75d | start no earlier than 2017-07-19 08:00 |
| 117 | 2.6.8.2 | **Controlador** | 0.62d | 2017-07-20 09:00 | 2017-07-20 16:00 |  | 6.38d |  |
| 118 |  | Alta | 5h | 2017-07-20 09:00 | 2017-07-20 16:00 |  | 6.38d | finish no earlier than 2017-07-20 16:00 |
| 119 |  | Consulta | 5h | 2017-07-20 09:00 | 2017-07-20 16:00 |  | 6.38d | finish no earlier than 2017-07-20 16:00 |
| 120 |  | Modificación | 5h | 2017-07-20 09:00 | 2017-07-20 16:00 |  | 6.38d | finish no earlier than 2017-07-20 16:00 |
| 121 |  | Baja | 5h | 2017-07-20 09:00 | 2017-07-20 16:00 |  | 6.38d | finish no earlier than 2017-07-20 16:00 |
| 122 |  | Vistas/interfaz | 5h | 2017-07-21 09:00 | 2017-07-21 16:00 |  | 5.38d | finish no earlier than 2017-07-21 16:00 |
| 123 |  | Reportes | 5h | 2017-07-21 09:00 | 2017-07-21 16:00 |  | 5.38d | finish no earlier than 2017-07-21 16:00 |
| 124 |  | Módulo mi carrito | 4d | 2017-07-21 09:00 | 2017-07-25 19:00 |  | 2d | start no earlier than 2017-07-21 08:00 |
| 125 | 2.6.10 | **Módulo contacto** | 1.62d | 2017-07-26 09:00 | 2017-07-27 16:00 |  | 0.38d |  |
| 126 |  | Clases de contacto | 2h | 2017-07-26 09:00 | 2017-07-26 11:00 |  | 1.75d | start no earlier than 2017-07-26 08:00 |
| 127 | 2.6.10.2 | **Controlador** | 1.62d | 2017-07-26 09:00 | 2017-07-27 16:00 |  | 0.38d |  |
| 128 |  | Alta | 5h | 2017-07-26 09:00 | 2017-07-26 16:00 |  | 1.38d | finish no earlier than 2017-07-26 16:00 |
| 129 |  | Consulta | 5h | 2017-07-26 09:00 | 2017-07-26 16:00 |  | 1.38d | finish no earlier than 2017-07-26 16:00 |
| 130 |  | Modificación | 5h | 2017-07-26 09:00 | 2017-07-26 16:00 |  | 1.38d | finish no earlier than 2017-07-26 16:00 |
| 131 |  | Baja | 5h | 2017-07-27 09:00 | 2017-07-27 16:00 |  | 0.38d | finish no earlier than 2017-07-27 16:00 |
| 132 |  | Vistas/interfaz | 5h | 2017-07-27 09:00 | 2017-07-27 16:00 |  | 0.38d | finish no earlier than 2017-07-27 16:00 |
| 133 |  | Reportes | 5h | 2017-07-27 09:00 | 2017-07-27 16:00 |  | 0.38d | finish no earlier than 2017-07-27 16:00 |
| 134 |  | Hito de codificación | 0.62d | 2017-07-27 09:00 | 2017-07-27 16:00 |  | 0.38d | finish no earlier than 2017-07-27 16:00 |
| 135 | 2.7 | **Pruebas** | 11d | 2017-07-27 16:00 | 2017-08-09 16:00 | 67 | 0.38d |  |
| 136 | 2.7.1 | **Caja blanca** | 5d | 2017-07-27 16:00 | 2017-08-02 16:00 |  | 0.38d |  |
| 137 | 2.7.1.1 | **Módulo de usuario** | 0.5d | 2017-07-27 16:00 | 2017-07-28 10:00 |  | 12.88d |  |
| 138 |  | Pruebas unitarias | 4h | 2017-07-27 16:00 | 2017-07-28 10:00 |  | 12.88d |  |
| 139 |  | Pruebas de módulo | 4h | 2017-07-27 16:00 | 2017-07-28 10:00 |  | 12.88d |  |
| 140 | 2.7.1.2 | **Módulo de categorías** | 0.5d | 2017-07-27 16:00 | 2017-07-28 10:00 |  | 12.88d |  |

| ID | WBS | Task | Duration | Start | Finish | Predecessors | Total float | Constraint |
| --- | --- | --- | --- | --- | --- | --- | --- | --- |
| 141 |  | Pruebas unitarias | 4h | 2017-07-27 16:00 | 2017-07-28 10:00 |  | 12.88d |  |
| 142 |  | Pruebas de módulo | 4h | 2017-07-27 16:00 | 2017-07-28 10:00 |  | 12.88d |  |
| 143 | 2.7.1.3 | **Módulo de productos** | 0.5d | 2017-07-27 16:00 | 2017-07-28 10:00 |  | 12.88d |  |
| 144 |  | Pruebas unitarias | 4h | 2017-07-27 16:00 | 2017-07-28 10:00 |  | 12.88d |  |
| 145 |  | Pruebas de módulo | 4h | 2017-07-27 16:00 | 2017-07-28 10:00 |  | 12.88d |  |
| 146 | 2.7.1.4 | **Módulo de ventas** | 1.75d | 2017-07-28 08:00 | 2017-07-29 16:00 |  |  |  |
| 147 |  | Pruebas unitarias | 4h | 2017-07-28 09:00 | 2017-07-28 13:00 |  | 12.5d |  |
| 148 |  | Pruebas de módulo | 4h | 2017-07-28 09:00 | 2017-07-28 13:00 |  | 12.5d |  |
| 149 | 2.7.1.5 | **Módulo comentarios** | 1.75d | 2017-07-28 08:00 | 2017-07-29 16:00 |  |  |  |
| 150 |  | Pruebas unitarias | 4h | 2017-07-28 09:00 | 2017-07-28 13:00 |  | 12.5d |  |
| 151 |  | Pruebas de módulo | 4h | 2017-07-28 09:00 | 2017-07-28 13:00 |  | 12.5d |  |
| 152 | 2.7.1.6 | **Módulo promociones** | 0.75d | 2017-07-31 08:00 | 2017-07-31 16:00 |  |  |  |
| 153 |  | Pruebas unitarias | 4h | 2017-07-31 09:00 | 2017-07-31 13:00 |  | 10.5d |  |
| 154 |  | Pruebas de módulo | 4h | 2017-07-31 09:00 | 2017-07-31 13:00 |  | 10.5d |  |
| 155 | 2.7.1.7 | **Módulo mi carrito** | 1.75d | 2017-08-01 08:00 | 2017-08-02 16:00 |  |  |  |
| 156 |  | Pruebas unitarias | 4h | 2017-08-01 09:00 | 2017-08-01 13:00 |  | 9.5d |  |
| 157 |  | Pruebas de módulo | 4h | 2017-08-01 09:00 | 2017-08-01 13:00 |  | 9.5d |  |
| 158 | 2.7.1.8 | **Módulo contacto** | 0.5d | 2017-08-02 09:00 | 2017-08-02 13:00 |  | 8.5d |  |
| 159 |  | Pruebas unitarias | 4h | 2017-08-02 09:00 | 2017-08-02 13:00 |  | 8.5d | start no earlier than 2017-08-02 08:00 |
| 160 |  | Pruebas de módulo | 4h | 2017-08-02 09:00 | 2017-08-02 13:00 |  | 8.5d | start no earlier than 2017-08-02 08:00 |
| 161 |  | Hito de pruebas | 6d | 2017-08-02 16:00 | 2017-08-09 16:00 | 136 | 8.38d | finish no earlier than 2017-08-02 16:00 |
| 162 | 2.8 | **Integración** | 1.75d | 2017-08-03 08:00 | 2017-08-04 16:00 |  |  |  |
| 163 |  | Pruebas de integración | 1d | 2017-08-03 09:00 | 2017-08-03 19:00 |  | 9.38d |  |
| 164 |  | Hito de integración | 0d | 2017-08-04 16:00 | 2017-08-04 16:00 | 163 | 12.38d | finish no earlier than 2017-08-04 16:00 |
| 165 | 2.9 | **Implementación** | 0.62d | 2017-08-05 09:00 | 2017-08-05 16:00 | 162 | 8.38d |  |
| 166 |  | Lista de hosting | 5h | 2017-08-05 09:00 | 2017-08-05 16:00 |  | 8.38d | finish no earlier than 2017-08-05 16:00 |
| 167 |  | Evaluación de hosting | 5h | 2017-08-05 09:00 | 2017-08-05 16:00 |  | 8.38d | finish no earlier than 2017-08-05 16:00 |
| 168 |  | Montar el sitio en el hosting | 5h | 2017-08-05 09:00 | 2017-08-05 16:00 |  | 8.38d | finish no earlier than 2017-08-05 16:00 |
| 169 |  | Pruebas de sistema | 5h | 2017-08-05 09:00 | 2017-08-05 16:00 |  | 8.38d | finish no earlier than 2017-08-05 16:00 |
| 170 |  | Hito de implementación | 0d | 2017-08-05 16:00 | 2017-08-05 16:00 |  | 8.38d | finish no earlier than 2017-08-05 16:00 |
| 171 | 2.10 | **Cierre de proyecto** | 5.62d | 2017-08-07 09:00 | 2017-08-12 16:00 | 165 | 5.38d |  |
| 172 |  | Carta de aceptación | 3h | 2017-08-07 09:00 | 2017-08-07 12:00 |  | 10.62d | start no earlier than 2017-08-07 08:00 |
| 173 |  | Acta de cierre de proyecto | 3h | 2017-08-07 09:00 | 2017-08-07 12:00 |  | 10.62d | start no earlier than 2017-08-07 08:00 |
| 174 |  | Evaluación de desempeño | 2h | 2017-08-07 09:00 | 2017-08-07 11:00 |  | 10.75d | start no earlier than 2017-08-07 08:00 |
| 175 |  | Junta de lecciones aprendidas | 3h | 2017-08-08 09:00 | 2017-08-08 12:00 |  | 9.62d | start no earlier than 2017-08-08 08:00 |
| 176 |  | Revisión de adherencias | 3h | 2017-08-08 09:00 | 2017-08-08 12:00 |  | 9.62d | start no earlier than 2017-08-08 08:00 |
| 177 |  | Liberación de recursos | 2h | 2017-08-09 09:00 | 2017-08-09 11:00 |  | 8.75d | start no earlier than 2017-08-09 08:00 |
| 178 |  | Informe final (Cierre) | 3d | 2017-08-09 09:00 | 2017-08-11 19:00 |  | 6d | start no earlier than 2017-08-09 08:00 |
| 179 |  | Hito de cierre de proyecto | 0d | 2017-08-12 16:00 | 2017-08-12 16:00 |  | 5.38d | finish no earlier than 2017-08-12 16:00 |
| 184 | 3 | **Revisión** | 81d | 2017-05-06 08:00 | 2017-08-12 08:00 |  | 0d |  |
| 185 |  | Revisión 1 | 0d | 2017-05-06 08:00 | 2017-05-06 08:00 |  |  | start no earlier than 2017-05-06 08:00 |
| 186 |  | Revisión 2 | 0d | 2017-05-13 08:00 | 2017-05-13 08:00 |  |  | start no earlier than 2017-05-13 08:00 |
| 187 |  | Revisión 3 | 0d | 2017-05-20 08:00 | 2017-05-20 08:00 |  |  | start no earlier than 2017-05-20 08:00 |
| 188 |  | Revisión 4 | 0d | 2017-05-27 08:00 | 2017-05-27 08:00 |  |  | start no earlier than 2017-05-27 08:00 |
| 189 |  | Revisión 5 | 0d | 2017-06-03 08:00 | 2017-06-03 08:00 |  |  | start no earlier than 2017-06-03 08:00 |
| 190 |  | Revisión 6 | 0d | 2017-06-10 08:00 | 2017-06-10 08:00 |  |  | start no earlier than 2017-06-10 08:00 |
| 191 |  | Revisión 7 | 0d | 2017-06-17 08:00 | 2017-06-17 08:00 |  |  | start no earlier than 2017-06-17 08:00 |
| 192 |  | Revisión 8 | 0d | 2017-06-24 08:00 | 2017-06-24 08:00 |  |  | start no earlier than 2017-06-24 08:00 |
| 193 |  | Revisión 9 | 0d | 2017-07-01 08:00 | 2017-07-01 08:00 |  |  | start no earlier than 2017-07-01 08:00 |
| 194 |  | Revisión 10 | 0d | 2017-07-08 08:00 | 2017-07-08 08:00 |  |  | start no earlier than 2017-07-08 08:00 |
| 195 |  | Revisión 11 | 0d | 2017-07-15 08:00 | 2017-07-15 08:00 |  |  | start no earlier than 2017-07-15 08:00 |
| 196 |  | Revisión 12 | 0d | 2017-07-22 08:00 | 2017-07-22 08:00 |  |  | start no earlier than 2017-07-22 08:00 |
| 197 |  | Revisión 13 | 0d | 2017-07-29 08:00 | 2017-07-29 08:00 |  |  | start no earlier than 2017-07-29 08:00 |
| 198 |  | Revisión 14 | 0d | 2017-08-05 08:00 | 2017-08-05 08:00 |  |  | start no earlier than 2017-08-05 08:00 |
| 199 |  | Revisión 15 | 0d | 2017-08-12 08:00 | 2017-08-12 08:00 |  |  | start no earlier than 2017-08-12 08:00 |

## Version 2 (saved 2017-07-02)

Last finish stays 2017-08-19.

Changed:

| ID | Task | Start | Finish | Duration | Total float | Other |
| --- | --- | --- | --- | --- | --- | --- |
| 67 | **Codificación** | 2017-06-29 09:00 → 2017-07-10 08:00 (+11d) | 2017-07-27 16:00 → 2017-08-07 13:00 (+11d) |  | 1d → none |  |
| 68 | Codificación de la base de datos | 2017-06-29 09:00 → 2017-07-10 09:00 (+11d) | 2017-06-29 16:00 → 2017-07-10 16:00 (+11d) |  | 24.38d → 34.38d | constraint start no earlier than 2017-06-29 08:00 → start no earlier than 2017-07-10 08:00 |
| 69 | Index | 2017-06-30 09:00 → 2017-07-11 09:00 (+11d) | 2017-06-30 13:00 → 2017-07-11 13:00 (+11d) |  | 23.5d → 33.5d | constraint start no earlier than 2017-06-30 08:00 → start no earlier than 2017-07-11 08:00 |
| 70 | **Módulo de usuarios** | 2017-06-30 08:00 → 2017-07-10 08:00 (+10d) | 2017-07-04 16:00 → 2017-07-13 16:00 (+9d) |  |  |  |
| 71 | Clase de usuarios | 2017-07-01 09:00 → 2017-07-11 09:00 (+10d) | 2017-07-01 11:00 → 2017-07-11 11:00 (+10d) |  | 22.75d → 2.38d |  |
| 72 | **Controlador** | 2017-07-03 09:00 → 2017-07-10 09:00 (+7d) | 2017-07-04 16:00 → 2017-07-11 16:00 (+7d) |  | 20.38d → 2d |  |
| 73 | Alta | 2017-07-03 09:00 → 2017-07-10 09:00 (+7d) | 2017-07-03 18:00 → 2017-07-10 18:00 (+7d) |  | 21.12d → 2.75d |  |
| 74 | Consulta | 2017-07-03 09:00 → 2017-07-10 09:00 (+7d) | 2017-07-04 16:00 → 2017-07-11 16:00 (+7d) |  | 20.38d → 2d |  |
| 75 | Modificación | 2017-07-03 09:00 → 2017-07-10 09:00 (+7d) | 2017-07-04 16:00 → 2017-07-11 16:00 (+7d) |  | 20.38d → 2d |  |
| 76 | Baja | 2017-07-04 09:00 → 2017-07-10 09:00 (+6d) | 2017-07-04 16:00 → 2017-07-10 16:00 (+6d) |  | 20.38d → 3d |  |
| 79 | **Módulo de categorías** | 2017-07-05 08:00 → 2017-07-13 08:00 (+8d) | 2017-07-07 16:00 → 2017-07-15 16:00 (+8d) |  |  |  |
| 80 | Clase de categorías | 2017-07-05 09:00 → 2017-07-13 09:00 (+8d) | 2017-07-06 16:00 → 2017-07-14 16:00 (+8d) |  | 37.38d → 30.38d | constraint finish no earlier than 2017-07-06 16:00 → start no earlier than 2017-07-13 08:00 |
| 81 | **Controlador** | 2017-07-05 08:00 → 2017-07-13 08:00 (+8d) | 2017-07-06 16:00 → 2017-07-14 16:00 (+8d) |  |  |  |
| 86 | Vistas/interfaz | 2017-07-06 09:00 → 2017-07-14 09:00 (+8d) | 2017-07-07 16:00 → 2017-07-15 16:00 (+8d) |  | 36.38d → 29.38d | constraint finish no earlier than 2017-07-07 16:00 → start no earlier than 2017-07-14 08:00 |
| 87 | Reportes | 2017-07-06 09:00 → 2017-07-14 09:00 (+8d) | 2017-07-07 16:00 → 2017-07-15 16:00 (+8d) |  | 36.38d → 29.38d | constraint finish no earlier than 2017-07-07 16:00 → start no earlier than 2017-07-14 08:00 |
| 88 | **Módulo de productos** | 2017-07-08 09:00 → 2017-07-10 09:00 (+2d) |  | 6.62d → 5.62d | 10.38d → 18.88d |  |
| 89 | Clases de producto | 2017-07-08 09:00 → 2017-07-10 09:00 (+2d) | 2017-07-08 11:00 → 2017-07-10 11:00 (+2d) |  | 16.75d → 24.25d |  |
| 90 | **Controlador** | 2017-07-08 09:00 → 2017-07-10 09:00 (+2d) |  | 2.62d → 1.62d | 14.38d → 22.88d |  |
| 91 | Alta | 2017-07-08 09:00 → 2017-07-10 09:00 (+2d) | 2017-07-10 16:00 → 2017-07-11 16:00 (+1d) |  | 15.38d → 22.88d |  |
| 92 | Consulta | 2017-07-08 09:00 → 2017-07-10 09:00 (+2d) | 2017-07-10 16:00 → 2017-07-11 16:00 (+1d) |  | 15.38d → 22.88d |  |
| 135 | **Pruebas** | 2017-07-27 16:00 → 2017-07-28 08:00 (+1d) | 2017-08-09 16:00 → 2017-08-14 19:00 (+5d) | 11d → 15d | 0.38d → 0d |  |
| 136 | **Caja blanca** | 2017-07-27 16:00 → 2017-07-28 08:00 (+1d) | 2017-08-02 16:00 → 2017-08-07 19:00 (+5d) | 5d → 9d | 0.38d → 0d |  |
| 137 | **Módulo de usuario** | 2017-07-27 16:00 → 2017-08-07 15:00 (+11d) | 2017-07-28 10:00 → 2017-08-07 19:00 (+10d) |  | 12.88d → 4d |  |
| 138 | Pruebas unitarias | 2017-07-27 16:00 → 2017-08-07 15:00 (+11d) | 2017-07-28 10:00 → 2017-08-07 19:00 (+10d) |  | 12.88d → 4d |  |
| 139 | Pruebas de módulo | 2017-07-27 16:00 → 2017-08-07 15:00 (+11d) | 2017-07-28 10:00 → 2017-08-07 19:00 (+10d) |  | 12.88d → 4d |  |
| 140 | **Módulo de categorías** | 2017-07-27 16:00 → 2017-08-07 15:00 (+11d) | 2017-07-28 10:00 → 2017-08-07 19:00 (+10d) |  | 12.88d → 4d |  |
| 141 | Pruebas unitarias | 2017-07-27 16:00 → 2017-08-07 15:00 (+11d) | 2017-07-28 10:00 → 2017-08-07 19:00 (+10d) |  | 12.88d → 4d |  |
| 142 | Pruebas de módulo | 2017-07-27 16:00 → 2017-08-07 15:00 (+11d) | 2017-07-28 10:00 → 2017-08-07 19:00 (+10d) |  | 12.88d → 4d |  |
| 143 | **Módulo de productos** | 2017-07-27 16:00 → 2017-08-07 15:00 (+11d) | 2017-07-28 10:00 → 2017-08-07 19:00 (+10d) |  | 12.88d → 4d |  |
| 144 | Pruebas unitarias | 2017-07-27 16:00 → 2017-08-07 15:00 (+11d) | 2017-07-28 10:00 → 2017-08-07 19:00 (+10d) |  | 12.88d → 4d |  |
| 145 | Pruebas de módulo | 2017-07-27 16:00 → 2017-08-07 15:00 (+11d) | 2017-07-28 10:00 → 2017-08-07 19:00 (+10d) |  | 12.88d → 4d |  |
| 158 | **Módulo contacto** | 2017-08-02 09:00 → 2017-08-07 15:00 (+5d) | 2017-08-02 13:00 → 2017-08-07 19:00 (+5d) |  | 8.5d → 4d |  |
| 159 | Pruebas unitarias | 2017-08-02 09:00 → 2017-08-07 15:00 (+5d) | 2017-08-02 13:00 → 2017-08-07 19:00 (+5d) |  | 8.5d → 4d |  |
| 160 | Pruebas de módulo | 2017-08-02 09:00 → 2017-08-07 15:00 (+5d) | 2017-08-02 13:00 → 2017-08-07 19:00 (+5d) |  | 8.5d → 4d |  |
| 161 | Hito de pruebas | 2017-08-02 16:00 → 2017-08-08 09:00 (+6d) | 2017-08-09 16:00 → 2017-08-14 19:00 (+5d) |  | 8.38d → 4d |  |
